# РК-1

Schedule from MS Project, 2024-04-01 to 2024-07-22, status date 2024-05-17, costs in р., A marks actual dates.
Microsoft

## Calendars

- Стандартный: Mon-Fri 09:00-13:00, 14:00-18:00; Sat-Sun off. Exceptions (off unless hours are given): 2024-04-27 09:00-13:00, 14:00-18:00 (Рабочий день), 2024-04-29 to 2024-05-01 (1 мая), 2024-05-09 to 2024-05-10 (9 мая), 2024-06-12 (12 июня).

## Resources

| Resource | Group | Unit | Rate | Cost per use |
| --- | --- | --- | --- | --- |
| Аналитик |  |  | 500 | 5000 |
| Ведущий программист | Программисты |  | 437.5 | 3000 |
| Программист 1 | Программисты |  | 312.5 | 2000 |
| Программист 2 | Программисты |  | 312.5 | 2000 |
| Программист 3 | Программисты |  | 312.5 | 2000 |
| Технический писатель |  |  | 250 | 1500 |
| Наборщики данных | Технический персонал |  | 218.75 | 1000 |
| Сервер базы данных | Оборудование |  | 25000 | 10000 |
| Картриджи для принтера | Расходные материалы | шт | 2500 |  |
| Бумага | Расходные материалы | пач | 200 |  |
| Специалист из сторонней организации | Договор | обсл | 3000 |  |

## Schedule

| ID | WBS | Task | Type | Duration | Start | Finish | Predecessors | Complete | Remaining | Baseline start | Baseline finish | Baseline duration | Total slack | Free slack | Constraint | Resources | Work | Actual work | Cost | Baseline cost | Actual cost |
| --- | --- | --- | --- | --- | --- | --- | --- | --- | --- | --- | --- | --- | --- | --- | --- | --- | --- | --- | --- | --- | --- |
| 1 | 1 | Начало реализации проекта | milestone | 0d | 2024-04-01 09:00 A | 2024-04-01 09:00 A |  | 100% |  | 2024-04-01 09:00 | 2024-04-01 09:00 | 0d |  |  |  |  |  |  |  |  |  |
| 2 | 2 | **Программирование** |  | 35d | 2024-04-02 09:00 A | 2024-05-28 10:00 |  | 87% | 4.55d | 2024-04-02 09:00 | 2024-05-28 10:00 | 35d | 0d |  |  | Сервер базы данных | 800h | 696h | 335,000 | 335,000 | 310,930 |
| 3 | 2.1 | Постановка задачи |  | 5d | 2024-04-02 09:00 A | 2024-04-08 18:00 A | 1FS+1d | 100% |  | 2024-04-02 09:00 | 2024-04-08 18:00 | 5d |  |  |  | Аналитик; Ведущий программист | 80h | 80h | 45,500 | 45,500 | 45,500 |
| 4 | 2.2 | Разработка интерфейса |  | 10d | 2024-04-09 09:00 A | 2024-04-22 18:00 A | 3 | 100% |  | 2024-04-09 09:00 | 2024-04-22 18:00 | 10d |  |  |  | Ведущий программист; Программист 1 | 160h | 160h | 65,000 | 65,000 | 65,000 |
| 5 | 2.3 | Разработка модулей обработки данных |  | 15d | 2024-04-23 09:00 A | 2024-05-20 16:00 | 4 | 95% | 0.75d | 2024-04-23 09:00 | 2024-05-20 16:00 | 15d | 5d |  |  | Программист 2; Программист 3 | 240h | 228h | 79,000 | 79,000 | 75,250 |
| 6 | 2.4 | Разработка база данных |  | 10d | 2024-04-23 09:00 A | 2024-05-13 12:00 A | 3 | 100% |  | 2024-04-23 09:00 | 2024-05-13 12:00 | 10d |  |  |  | Аналитик; Программист 1 | 160h | 160h | 72,000 | 72,000 | 72,000 |
| 7 | 2.5 | Заполнение базы данных |  | 10d | 2024-05-13 12:00 A | 2024-05-28 10:00 | 6 | 43% | 5.75d | 2024-05-13 12:00 | 2024-05-28 10:00 | 10d | 0d |  |  | Наборщики данных [200%] | 160h | 68h | 37,000 | 37,000 | 16,875 |
| 8 | 3 | Программирование завершено | milestone | 0d | 2024-05-28 10:00 | 2024-05-28 10:00 | 5, 7 |  |  | 2024-05-28 10:00 | 2024-05-28 10:00 | 0d | 0d |  |  |  |  |  |  |  |  |
| 9 | 4 | **Тестирование и отладка** |  | 20d | 2024-05-20 16:00 | 2024-06-20 15:00 |  |  |  | 2024-05-20 16:00 | 2024-06-20 15:00 | 20d | 20d |  |  |  | 320h |  | 125,000 | 125,000 |  |
| 10 | 4.1 | Подготовка тестовых наборов данных |  | 5d | 2024-05-20 16:00 | 2024-05-28 10:00 | 8FS-5d |  |  | 2024-05-20 16:00 | 2024-05-28 10:00 | 5d | 20d | 0d |  | Программист 1; Программист 3 | 80h |  | 29,000 | 29,000 |  |
| 11 | 4.2 | Тестирование и исправление ошибок |  | 15d | 2024-05-28 10:00 | 2024-06-20 15:00 | 10 |  |  | 2024-05-28 10:00 | 2024-06-20 15:00 | 15d | 20d | 0d |  | Ведущий программист; Программист 2 | 240h |  | 95,000 | 95,000 |  |
| 12 | 5 | Отладка завершена | milestone | 0d | 2024-06-20 15:00 | 2024-06-20 15:00 | 11 |  |  | 2024-06-20 15:00 | 2024-06-20 15:00 | 0d | 20d |  |  |  |  |  |  |  |  |
| 13 | 6 | **Разработка документации** |  | 25d | 2024-06-13 11:00 | 2024-07-22 10:00 |  |  |  | 2024-06-13 11:00 | 2024-07-22 10:00 | 25d | 0d |  |  | Картриджи для принтера [0.01 шт]; Бумага [0.01 пач] | 200h |  | 59,500 | 59,500 |  |
| 14 | 6.1 | Составление программной документации |  | 10d | 2024-06-13 11:00 | 2024-06-27 18:00 | 8SS+10d |  |  | 2024-06-13 11:00 | 2024-06-27 18:00 | 10d | 0d |  |  | Технический писатель | 80h |  | 21,500 | 21,500 |  |
| 15 | 6.2 | Составление пользовательской документации |  | 15d | 2024-06-28 09:00 | 2024-07-22 10:00 | 14 |  |  | 2024-06-28 09:00 | 2024-07-22 10:00 | 15d | 0d |  |  | Технический писатель | 120h |  | 31,500 | 31,500 |  |
| 16 | 7 | Конец проекта | milestone | 0d | 2024-07-22 10:00 | 2024-07-22 10:00 | 15 |  |  | 2024-07-22 10:00 | 2024-07-22 10:00 | 0d | 0d |  |  |  |  |  |  |  |  |
| 17 | 8 | **Профилактика оборудования** |  | 51.62d | 2024-04-23 09:00 A | 2024-07-16 12:00 |  | 29% | 36.88d | 2024-04-23 09:00 | 2024-07-16 12:00 | 51.62d | 0d |  |  |  |  |  | 21,000 | 21,000 | 6,000 |
| 18 | 8.1 | Профилактика оборудования 1 | manual | 3h | 2024-04-23 09:00 A | 2024-04-23 12:00 A |  | 100% |  | 2024-04-23 09:00 | 2024-04-23 12:00 | 3h |  |  | start no earlier than 2024-04-23 09:00 | Специалист из сторонней организации [1 обсл] |  |  | 3,000 | 3,000 | 3,000 |
| 19 | 8.2 | Профилактика оборудования 2 | manual | 3h | 2024-05-07 09:00 A | 2024-05-07 12:00 A |  | 100% |  | 2024-05-07 09:00 | 2024-05-07 12:00 | 3h |  |  | start no earlier than 2024-05-07 09:00 | Специалист из сторонней организации [1 обсл] |  |  | 3,000 | 3,000 | 3,000 |
| 20 | 8.3 | Профилактика оборудования 3 | manual | 3h | 2024-05-21 09:00 | 2024-05-21 12:00 |  |  |  | 2024-05-21 09:00 | 2024-05-21 12:00 | 3h |  |  | start no earlier than 2024-05-21 09:00 | Специалист из сторонней организации [1 обсл] |  |  | 3,000 | 3,000 |  |
| 21 | 8.4 | Профилактика оборудования 4 | manual | 3h | 2024-06-04 09:00 | 2024-06-04 12:00 |  |  |  | 2024-06-04 09:00 | 2024-06-04 12:00 | 3h |  |  | start no earlier than 2024-06-04 09:00 | Специалист из сторонней организации [1 обсл] |  |  | 3,000 | 3,000 |  |
| 22 | 8.5 | Профилактика оборудования 5 | manual | 3h | 2024-06-18 09:00 | 2024-06-18 12:00 |  |  |  | 2024-06-18 09:00 | 2024-06-18 12:00 | 3h |  |  | start no earlier than 2024-06-18 09:00 | Специалист из сторонней организации [1 обсл] |  |  | 3,000 | 3,000 |  |
| 23 | 8.6 | Профилактика оборудования 6 | manual | 3h | 2024-07-02 09:00 | 2024-07-02 12:00 |  |  |  | 2024-07-02 09:00 | 2024-07-02 12:00 | 3h |  |  | start no earlier than 2024-07-02 09:00 | Специалист из сторонней организации [1 обсл] |  |  | 3,000 | 3,000 |  |
| 24 | 8.7 | Профилактика оборудования 7 | manual | 3h | 2024-07-16 09:00 | 2024-07-16 12:00 |  |  |  | 2024-07-16 09:00 | 2024-07-16 12:00 | 3h |  |  | start no earlier than 2024-07-16 09:00 | Специалист из сторонней организации [1 обсл] |  |  | 3,000 | 3,000 |  |
